# 生产预警及进度

How a schedule from a web Gantt chart changed from version to version. A marks actual dates.

## Version 1 (saved 2024-09-29)

| ID | WBS | Task | Duration | Start | Finish | Predecessors |
| --- | --- | --- | --- | --- | --- | --- |
| 2 | 1 | **后台逻辑计算** | 6d | 2023-10-13 | 2023-10-20 |  |
| 3 |  | 各种方案不同时间的计算 | 3d | 2023-10-13 | 2023-10-17 |  |
| 4 |  | 加入预警工程流程任务 | 3d | 2023-10-18 | 2023-10-20 | 3 |
| 5 | 2 | **需求一（生产预警及进度处理）** | 13d | 2023-10-23 | 2023-11-08 |  |
| 6 |  | 基因合成生产数据管理 | 3d | 2023-10-23 | 2023-10-25 | 4 |
| 7 |  | 基因合成延期工单管理 | 3d | 2023-10-26 | 2023-10-30 | 6 |
| 8 |  | 基因工单延期详情 | 3d | 2023-10-31 | 2023-11-02 | 7 |
| 9 |  | 关系图谱查看页 | 2d | 2023-11-03 | 2023-11-06 | 8 |
| 10 |  | 基因合成工单管理V1 | 2d | 2023-11-07 | 2023-11-08 | 9 |
| 11 | 3 | **需求二（客户邮件及延期预警邮件发送处理）** | 7d | 2023-11-09 | 2023-11-17 |  |
| 12 |  | 基因延期邮件发送 | 3d | 2023-11-09 | 2023-11-13 | 5 |
| 13 |  | 每周二基因进度邮件发送 | 2d | 2023-11-14 | 2023-11-15 | 12 |
| 14 |  | 基因客户沟通邮件设置 | 2d | 2023-11-16 | 2023-11-17 | 13 |
| 15 |  | 需求三（销售app可查看基因订单预计完成时间） | 2d | 2023-11-20 | 2023-11-21 | 11 |
| 16 |  | [测试]需求一 | 12d | 2023-11-09 | 2023-11-24 | 5 |
| 17 |  | [测试]需求二 | 3d | 2023-11-27 | 2023-11-29 | 16 |
| 18 |  | [测试]需求三 | 1d | 2023-11-30 | 2023-11-30 | 17 |
| 19 |  | 【全量测试】 | 2d | 2023-12-01 | 2023-12-04 | 18 |

## Version 2 (saved 2024-09-29)

Last finish 2023-12-04 → 2023-12-07 (+3d).

Changed:

| ID | Task | Start | Finish | Duration |
| --- | --- | --- | --- | --- |
| 16 | [测试]需求一 |  | 2023-11-24 → 2023-11-29 (+5d) | 12d → 15d |
| 17 | [测试]需求二 | 2023-11-27 → 2023-11-30 (+3d) | 2023-11-29 → 2023-12-04 (+5d) |  |
| 18 | [测试]需求三 | 2023-11-30 → 2023-12-05 (+5d) | 2023-11-30 → 2023-12-05 (+5d) |  |
| 19 | 【全量测试】 | 2023-12-01 → 2023-12-06 (+5d) | 2023-12-04 → 2023-12-07 (+3d) |  |

## Version 3 (saved 2024-09-29)

Last finish 2023-12-07 → 2023-12-04 (-3d).

Changed:

| ID | Task | Start | Finish | Duration |
| --- | --- | --- | --- | --- |
| 16 | [测试]需求一 |  | 2023-11-29 → 2023-11-24 (-5d) | 15d → 12d |
| 17 | [测试]需求二 | 2023-11-30 → 2023-11-27 (-3d) | 2023-12-04 → 2023-11-29 (-5d) |  |
| 18 | [测试]需求三 | 2023-12-05 → 2023-11-30 (-5d) | 2023-12-05 → 2023-11-30 (-5d) |  |
| 19 | 【全量测试】 | 2023-12-06 → 2023-12-01 (-5d) | 2023-12-07 → 2023-12-04 (-3d) |  |
